# gantt

Schedule from MS Project, 2025-05-27 to 2025-07-11, A marks actual dates.

## Calendars

- Estándar: Mon-Fri 09:00-13:00, 15:00-19:00; Sat-Sun off.

## Schedule

| ID | WBS | Task | Type | Duration | Start | Finish | Predecessors | Complete | Remaining | Total slack |
| --- | --- | --- | --- | --- | --- | --- | --- | --- | --- | --- |
| 1 | 1 | **Diplomas y Certificados v1** |  | 29d | 2025-06-03 A | 2025-07-11 |  | 64% | 10.5d |  |
| 2 | 1.1 | **Panel de usuario** |  | 8d | 2025-06-03 A | 2025-06-12 A |  | 100% |  |  |
| 3 | 1.1.1 | Acceso de Usuario |  | 1d | 2025-06-03 A | 2025-06-03 A |  | 100% |  |  |
| 4 | 1.1.2 | Home |  | 1d | 2025-06-04 A | 2025-06-04 A | 3 | 100% |  |  |
| 5 | 1.1.3 | Mis cursos |  | 2d | 2025-06-05 A | 2025-06-06 A | 4 | 100% |  |  |
| 6 | 1.1.4 | Ver certificado |  | 3d | 2025-06-09 A | 2025-06-11 A | 5 | 100% |  |  |
| 7 | 1.1.5 | Perfil |  | 1d | 2025-06-12 A | 2025-06-12 A | 6 | 100% |  |  |
| 8 | 1.2 | **Panel de administrador** |  | 14d | 2025-06-13 A | 2025-07-02 |  | 75% | 3.5d | 7d |
| 9 | 1.2.1 | Acceso de Administrador |  | 1d | 2025-06-13 A | 2025-06-13 A | 7 | 100% |  |  |
| 10 | 1.2.2 | Home |  | 1d | 2025-06-16 A | 2025-06-16 | 9 | 50% | 0.5d | 19d |
| 11 | 1.2.3 | Mantenimiento de cursos |  | 2d | 2025-06-17 A | 2025-06-18 A | 10 | 100% |  |  |
| 12 | 1.2.4 | Mantenimiento de categorias |  | 2d | 2025-06-19 A | 2025-06-20 A | 11 | 100% |  |  |
| 13 | 1.2.5 | Mantenimiento de instructores |  | 2d | 2025-06-23 A | 2025-06-24 A | 12 | 100% |  |  |
| 14 | 1.2.6 | Mantenimiento de usuarios |  | 2d | 2025-06-25 A | 2025-06-26 A | 13 | 100% |  |  |
| 15 | 1.2.7 | Detalle de certificados |  | 3d | 2025-06-27 | 2025-07-01 | 14 |  |  | 8d |
| 16 | 1.2.8 | Perfil |  | 1d | 2025-07-02 A | 2025-07-02 A | 15 | 100% |  |  |
| 17 | 1.3 | **Pruebas** |  | 7d | 2025-07-03 | 2025-07-11 |  |  |  | 0d |
| 18 | 1.3.1 | Pruebas con el cliente |  | 5d | 2025-07-03 | 2025-07-09 | 16 |  |  | 0d |
| 19 | 1.3.2 | Corrección y observaciones |  | 2d | 2025-07-10 | 2025-07-11 | 18 |  |  | 0d |
| 20 | 2 | Diplomas y Certificados v2 | inactive, manual | 1d? | 2025-05-27 | 2025-05-27 |  |  |  |  |
